# ARKartSmart

Schedule from MS Project, 2015-11-02 to 2016-08-09.

## Calendars

- Standard: Mon-Fri 08:00-12:00, 13:00-17:00; Sat-Sun off.

## Resources

| Resource |
| --- |
| Project Manager |
| Senior Software Engineer |
| Installation Support |
| Network Engineer |
| Systems Administrator |
| Software Trainer |
| Software Team |

## Schedule

| ID | WBS | Task | Duration | Start | Finish | Predecessors | Total slack | Free slack | Resources | Work |
| --- | --- | --- | --- | --- | --- | --- | --- | --- | --- | --- |
| 1 | 1 | **Hardware, etc** | 201d | 2015-11-02 | 2016-08-09 |  | 0d |  |  | 1742h |
| 2 | 1.1 | **Tablets** | 97d | 2015-11-02 | 2016-03-16 |  | 92.5d |  |  | 776h |
| 3 | 1.1.1 | Order Nexus 9 Tablets | 8h | 2015-11-02 | 2015-11-03 |  | 92.5d | 0d | Project Manager | 8h |
| 4 | 1.1.2 | Install Custom ROM | 40h | 2015-11-03 | 2015-11-10 | 3 | 92.5d | 0d | Senior Software Engineer | 40h |
| 5 | 1.1.3 | Inspect & Test | 40h | 2015-11-10 | 2015-11-17 | 4 | 92.5d | 0d | Installation Support | 40h |
| 6 | 1.1.4 | Test Network Connectivity | 20h | 2015-11-17 | 2015-11-19 | 5, 16 | 92.5d | 0d | Network Engineer | 20h |
| 7 | 1.1.5 | Integrate with ARKSmart Network | 20h | 2015-11-20 | 2015-11-24 | 6 | 92.5d | 0d | Network Engineer | 20h |
| 8 | 1.1.6 | Mount on Carts | 648h | 2015-11-24 | 2016-03-16 | 26, 7 | 92.5d |  | Installation Support | 648h |
| 9 | 1.2 | **Servers** | 7.5d | 2015-11-02 | 2015-11-11 |  | 96d | 0d |  | 68h |
| 10 | 1.2.1 | Purchase HQ Hardware | 8h | 2015-11-02 | 2015-11-03 |  | 93.25d | 0d | Project Manager | 8h |
| 11 | 1.2.2 | Purchase Store Hardware | 8h | 2015-11-02 | 2015-11-03 |  | 93.25d | 0d | Project Manager | 8h |
| 12 | 1.2.3 | Rack Mount Hardware | 12h | 2015-11-03 | 2015-11-04 | 10, 11 | 93.25d | 0d | Systems Administrator | 12h |
| 13 | 1.2.4 | Install OS | 12h | 2015-11-05 | 2015-11-06 | 12 | 93.25d | 0d | Systems Administrator | 12h |
| 14 | 1.2.5 | Patch OS | 12h | 2015-11-06 | 2015-11-09 | 13 | 93.25d | 0d | Systems Administrator | 12h |
| 15 | 1.2.6 | Configure Rack Mounted Networking | 8h | 2015-11-10 | 2015-11-10 | 14 | 96d | 0d | Network Engineer | 8h |
| 16 | 1.2.7 | Test Rack Mounted Network Connectivity | 8h | 2015-11-11 | 2015-11-11 | 15 | 96d | 3.5d | Network Engineer | 8h |
| 17 | 1.3 | **Barcode Scanners** | 35d | 2015-11-02 | 2015-12-21 |  | 154.5d |  |  | 248h |
| 18 | 1.3.1 | Purchase | 8h | 2015-11-02 | 2015-11-03 |  | 158.5d | 0d | Project Manager | 8h |
| 19 | 1.3.2 | Inspect & Test | 40h | 2015-11-03 | 2015-11-10 | 18 | 158.5d | 4d | Installation Support | 40h |
| 20 | 1.3.3 | Mount on Carts | 200h | 2015-11-16 | 2015-12-21 | 26, 19 | 154.5d |  | Installation Support | 200h |
| 21 | 1.4 | **Charging Stations** | 12.5d | 2015-11-02 | 2015-11-18 |  | 188.5d |  |  | 100h |
| 22 | 1.4.1 | Purchase | 8h | 2015-11-02 | 2015-11-03 |  | 183.5d | 0d | Project Manager | 8h |
| 23 | 1.4.2 | Assemble | 40h | 2015-11-03 | 2015-11-10 | 22 | 183.5d | 0d | Installation Support | 40h |
| 24 | 1.4.3 | Install | 40h | 2015-11-10 | 2015-11-17 | 23 | 183.5d | 0d | Installation Support | 40h |
| 25 | 1.4.4 | Test | 12h | 2015-11-17 | 2015-11-18 | 24 | 188.5d |  | Installation Support | 12h |

| ID | WBS | Task | Duration | Start | Finish | Predecessors | Total slack | Free slack | Resources | Work |
| --- | --- | --- | --- | --- | --- | --- | --- | --- | --- | --- |
| 26 | 1.5 | **Cart Mounting** | 10d | 2015-11-02 | 2015-11-16 |  | 98.5d | 0d |  | 80h |
| 27 | 1.5.1 | Purchase Hardware | 8h | 2015-11-02 | 2015-11-03 |  | 96d | 0d | Project Manager | 8h |
| 28 | 1.5.2 | Inspect Hardware | 72h | 2015-11-03 | 2015-11-16 | 27 | 98.5d |  | Installation Support | 72h |
| 29 | 1.6 | **ARKSMart Employee Training** | 11.5d | 2016-07-25 | 2016-08-09 | 85 | 0d |  |  | 102h |
| 30 | 1.6.1 | Tablet & Barcode Scanner Operation | 72h | 2016-07-25 | 2016-08-04 | 2, 17 | 0d |  | Software Team | 72h |
| 31 | 1.6.2 | Tablet Repair/Replacement | 20h | 2016-08-05 | 2016-08-09 | 2, 30 | 0d |  | Software Team | 20h |
| 32 | 1.6.3 | Barcode Scanner Replacement | 10h | 2016-08-05 | 2016-08-08 | 17, 30 | 1.25d |  | Software Team | 10h |
| 33 | 1.7 | **Branding** | 36d | 2015-11-02 | 2015-12-22 |  | 165d |  |  | 288h |
| 34 | 1.7.1 | Tablet Branding Design | 80h | 2015-11-02 | 2015-11-16 |  | 159.75d | 0d | Senior Software Engineer | 80h |
| 35 | 1.7.2 | Order/Purchase Branding for Tablets | 8h | 2015-11-16 | 2015-11-17 | 34 | 159.75d | 0d | Project Manager | 8h |
| 36 | 1.7.3 | Install Tablet Branding | 200h | 2015-11-17 | 2015-12-22 | 5, 35 | 165d |  | Installation Support | 200h |
| 37 | 1.8 | **Documentation** | 157.5d | 2015-11-12 | 2016-06-20 |  | 36d |  |  | 80h |
| 38 | 1.8.1 | ARKSmart Network Configuration | 40h | 2015-11-12 | 2015-11-18 | 9 | 188.5d |  | Network Engineer | 40h |
| 39 | 1.8.2 | Software User Guide | 40h | 2016-06-13 | 2016-06-20 | 69 | 36d |  | Software Team | 40h |
| 40 | 2 | **Software** | 189.5d | 2015-11-02 | 2016-07-22 |  | 0d |  |  | 1552h |
| 41 | 2.1 | **Agile Sprint 1 - Software Requirements** | 2.5d | 2015-11-02 | 2015-11-04 |  | 0d |  |  | 20h |
| 42 | 2.1.1 | Develop Software Requirements | 16h | 2015-11-02 | 2015-11-04 |  | 0d |  | Senior Software Engineer | 16h |
| 43 | 2.1.2 | Work Product Inspection (WPI) - Software Requirements Review | 4h | 2015-11-04 | 2015-11-04 | 42 | 0d |  | Software Team | 4h |
| 44 | 2.2 | **Agile Sprint 2 - Software Architecture/Design** | 6d | 2015-11-05 | 2015-11-12 | 41 | 0d |  |  | 68h |
| 45 | 2.2.1 | Develop/Customize Architecture/Design | 40h | 2015-11-05 | 2015-11-11 |  | 0d |  | Senior Software Engineer | 40h |
| 46 | 2.2.2 | WPI - Software Design Review | 8h | 2015-11-12 | 2015-11-12 | 45 | 0d |  | Software Team | 8h |
| 47 | 2.2.3 | COTS Selection/Approval | 20h | 2015-11-05 | 2015-11-09 |  | 3.5d |  | Senior Software Engineer | 20h |
| 48 | 2.3 | **Agile Sprint 3 - Software Environment** | 2.5d | 2015-11-13 | 2015-11-17 | 44 | 0d |  |  | 36h |
| 49 | 2.3.1 | Software Lab Environment Setup | 16h | 2015-11-13 | 2015-11-16 |  | 0d |  | Software Team | 16h |
| 50 | 2.3.2 | Software Lab Environment Validation | 4h | 2015-11-17 | 2015-11-17 | 49 | 0d |  | Software Team | 4h |
| 51 | 2.3.3 | Test Tool Selection/Approval/Development | 16h | 2015-11-13 | 2015-11-16 |  | 0.5d |  | Software Team | 16h |

| ID | WBS | Task | Duration | Start | Finish | Predecessors | Total slack | Resources | Work |
| --- | --- | --- | --- | --- | --- | --- | --- | --- | --- |
| 52 | 2.4 | **Agile Sprint 4 - Inventory System** | 44.5d | 2015-11-17 | 2016-01-18 | 48 | 0d |  | 356h |
| 53 | 2.4.1 | Inventory System Integration Development | 280h | 2015-11-17 | 2016-01-05 |  | 0d | Senior Software Engineer | 280h |
| 54 | 2.4.2 | **Testing** | 9d | 2016-01-05 | 2016-01-18 | 53 | 0d |  | 72h |
| 55 | 2.4.2.1 | Unit Level Testing | 48h | 2016-01-05 | 2016-01-13 |  | 0d | Senior Software Engineer | 48h |
| 56 | 2.4.2.2 | Component Level Testing | 24h | 2016-01-13 | 2016-01-18 | 55 | 0d | Software Team | 24h |
| 57 | 2.4.3 | WPI & Demo | 4h | 2016-01-18 | 2016-01-18 | 54 | 0d | Software Team | 4h |
| 58 | 2.5 | **Agile Sprint 5 - Customer Loyalty** | 44.5d | 2016-01-19 | 2016-03-21 | 52 | 0d |  | 356h |
| 59 | 2.5.1 | Customer Loyalty System Integration Development | 280h | 2016-01-19 | 2016-03-07 |  | 0d | Senior Software Engineer | 280h |
| 60 | 2.5.2 | **Testing** | 9d | 2016-03-08 | 2016-03-18 | 59 | 0d |  | 72h |
| 61 | 2.5.2.1 | Unit Level Testing | 48h | 2016-03-08 | 2016-03-15 |  | 0d | Senior Software Engineer | 48h |
| 62 | 2.5.2.2 | Component Level Testing | 24h | 2016-03-16 | 2016-03-18 | 61 | 0d | Software Team | 24h |
| 63 | 2.5.3 | WPI & Demo | 4h | 2016-03-21 | 2016-03-21 | 60 | 0d | Software Team | 4h |
| 64 | 2.6 | **Agile Sprint 6 - Integration/Test** | 10.5d | 2016-03-21 | 2016-04-04 | 58 | 0d |  | 84h |
| 65 | 2.6.1 | **System Level Integration Testing** | 10d | 2016-03-21 | 2016-04-04 |  | 0d |  | 80h |
| 66 | 2.6.1.1 | Customer Loyalty System Integration Testing | 40h | 2016-03-21 | 2016-03-28 |  | 0d | Software Team | 40h |
| 67 | 2.6.1.2 | Inventory System Integration Testing | 40h | 2016-03-28 | 2016-04-04 | 66 | 0d | Software Team | 40h |
| 68 | 2.6.2 | WPI & Demo | 4h | 2016-04-04 | 2016-04-04 | 65 | 0d | Software Team | 4h |
| 69 | 2.7 | **Agile Sprint 7 - OCF Smart Cart Software** | 49.5d | 2016-04-05 | 2016-06-13 | 64 | 0d |  | 396h |
| 70 | 2.7.1 | OCF Smart Cart System Integration Development | 280h | 2016-04-05 | 2016-05-23 |  | 0d | Senior Software Engineer | 280h |
| 71 | 2.7.2 | Software Customization | 40h | 2016-05-24 | 2016-05-30 | 70 | 0d | Senior Software Engineer | 40h |
| 72 | 2.7.3 | **Testing** | 9d | 2016-05-31 | 2016-06-10 | 71 | 0d |  | 72h |
| 73 | 2.7.3.1 | Unit Level Testing | 48h | 2016-05-31 | 2016-06-07 |  | 0d | Senior Software Engineer | 48h |
| 74 | 2.7.3.2 | Component Level Testing | 24h | 2016-06-08 | 2016-06-10 | 73 | 0d | Software Team | 24h |
| 75 | 2.7.4 | WPI & Demo | 4h | 2016-06-13 | 2016-06-13 | 72 | 0d | Software Team | 4h |

| ID | WBS | Task | Duration | Start | Finish | Predecessors | Total slack | Resources | Work |
| --- | --- | --- | --- | --- | --- | --- | --- | --- | --- |
| 76 | 2.8 | **Agile Sprint 8 - OCF Integration/Test** | 5.5d | 2016-06-13 | 2016-06-20 | 69 | 0d |  | 44h |
| 77 | 2.8.1 | **System Level Integration Testing** | 5d | 2016-06-13 | 2016-06-20 |  | 0d |  | 40h |
| 78 | 2.8.1.1 | OCF Smart Cart System Integration Testing | 40h | 2016-06-13 | 2016-06-20 |  | 0d | Senior Software Engineer | 40h |
| 79 | 2.8.2 | WPI & Demo | 4h | 2016-06-20 | 2016-06-20 | 77 | 0d | Software Team | 4h |
| 80 | 2.9 | **Agile Sprint 9 - Software Installation** | 14d | 2016-06-21 | 2016-07-08 | 76 | 0d |  | 112h |
| 81 | 2.9.1 | Install Customer Loyalty System Integration Software | 40h | 2016-06-21 | 2016-06-27 |  | 0d | Software Team | 40h |
| 82 | 2.9.2 | Install Inventory System Integration Software | 40h | 2016-06-28 | 2016-07-04 | 81 | 0d | Software Team | 40h |
| 83 | 2.9.3 | Install OCF Smart Cart Softtware | 24h | 2016-07-05 | 2016-07-07 | 82 | 0d | Software Team | 24h |
| 84 | 2.9.4 | WPI & Demo | 8h | 2016-07-08 | 2016-07-08 | 83 | 0d | Software Team | 8h |
| 85 | 2.10 | Acceptance Testing | 80h | 2016-07-11 | 2016-07-22 | 80 | 0d | Software Team | 80h |
